# Example School Modernization and Addition (synthetic)

Schedule from Primavera P6, 2020-02-03 to 2021-07-02, data date 2020-06-01, A marks actual dates.
Must finish by 2021-07-27

## Calendars

- 5-Day 8-Hour with WA legal holidays: Mon-Fri 08:00-12:00, 13:00-17:00; Sat-Sun off. Exceptions (off unless hours are given): 2020-02-17, 2020-05-25, 2020-07-03, 2020-09-07, 2020-11-11, 2020-11-26 to 2020-11-27, 2020-12-25, 2021-01-01, 2021-01-18, 2021-02-15, 2021-05-31.

## Schedule

| ID | WBS | Activity | Type | Duration | Start | Finish | Predecessors | Complete | Remaining | Planned start | Planned finish | Total float |
| --- | --- | --- | --- | --- | --- | --- | --- | --- | --- | --- | --- | --- |
|  | MS | **Milestones** |  |  | 2020-02-03 | 2021-07-02 |  |  |  |  |  |  |
| A1000 |  | Notice to Proceed | milestone | 0d | 2020-02-03 A | 2020-02-03 A |  | 100% |  |  |  |  |
| A1090 |  | Substantial Completion | milestone | 0d | 2021-07-02 | 2021-07-02 | A2260, A2320, A2330, A2350, A2360 |  |  | 2021-06-30 | 2021-06-30 | 0d |
|  | MOB | **Mobilization** |  |  | 2020-02-03 | 2020-11-03 |  |  |  |  |  |  |
| A1100 |  | Mobilize site office and trailers |  | 8d | 2020-02-03 A | 2020-02-12 A | A1000 | 100% |  |  |  |  |
| A1130 |  | Submittal schedule and long-lead buyout |  | 15d | 2020-02-03 A | 2020-02-24 A | A1000 | 100% |  |  |  |  |
| A1110 |  | Temporary fencing and site security |  | 4d | 2020-02-05 A | 2020-02-10 A | A1100 SS+2d | 100% |  |  |  |  |
| A1120 |  | Temporary power and utilities |  | 6d | 2020-02-06 A | 2020-02-13 A | A1100 SS+3d | 100% |  |  |  |  |
| A1140 |  | Erosion control and construction entrance |  | 3d | 2020-02-11 A | 2020-02-13 A | A1110 | 100% |  |  |  |  |
| A1150 |  | Temporary heat and dehumidification - addition |  | 10d | 2020-10-21 | 2020-11-03 | A1570, A1690 SF |  |  | 2020-10-19 | 2020-10-30 | 110d |
|  | ABT | **Abatement** |  |  | 2020-02-13 | 2020-05-05 |  |  |  |  |  |  |
| A1200 |  | Hazardous materials survey verification |  | 5d | 2020-02-13 A | 2020-02-20 A | A1100 | 100% |  |  |  |  |
| A1210 |  | Abatement - Wing A classrooms |  | 20d | 2020-02-21 A | 2020-03-19 A | A1200, A1120 | 100% |  |  |  |  |
| A1220 |  | Abatement - Wing B admin and library |  | 15d | 2020-03-20 A | 2020-04-13 A | A1210 | 100% |  | 2020-03-20 | 2020-04-09 |  |
| A1230 |  | Abatement - existing gym and commons |  | 12d | 2020-04-14 A | 2020-04-29 A | A1220 | 100% |  | 2020-04-10 | 2020-04-27 |  |
| A1240 |  | Abatement clearance air testing |  | 4d | 2020-04-30 A | 2020-05-05 A | A1230 | 100% |  | 2020-04-28 | 2020-05-01 |  |
|  | DEM | **Demolition** |  |  | 2020-03-20 | 2020-06-12 |  |  |  |  |  |  |
| A1300 |  | Interior demolition - Wing A |  | 15d | 2020-03-20 A | 2020-04-10 A | A1210 | 100% |  | 2020-03-20 | 2020-04-09 |  |
| A1330 |  | Structural openings and selective demolition - Wing A |  | 10d | 2020-04-13 A | 2020-04-24 A | A1300 | 100% |  | 2020-04-10 | 2020-04-23 |  |
| A1310 |  | Interior demolition - Wing B |  | 12d | 2020-04-14 A | 2020-04-29 A | A1220, A1300 | 100% |  | 2020-04-10 | 2020-04-27 |  |
| A1320 |  | Demolish existing gym (addition footprint) |  | 15d | 2020-05-06 A | 2020-05-27 A | A1240 | 100% |  | 2020-05-04 | 2020-05-22 |  |
| A1340 |  | Haul-off and clear addition footprint |  | 6d | 2020-05-28 A | 2020-06-04 | A1320 | 33% | 4d | 2020-05-26 | 2020-06-02 | 0d |
| A1350 |  | Demolish existing paving and site utilities |  | 10d | 2020-06-01 | 2020-06-12 | A1340 SS+2d |  |  | 2020-05-28 | 2020-06-10 | 183d |
|  | STR | **Foundations and Structure** |  |  | 2020-02-10 | 2020-09-15 |  |  |  |  |  |  |
| A1440 |  | Structural steel shop drawings and approval |  | 35d | 2020-02-10 A | 2020-04-02 A | A1130 SS+5d | 100% |  | 2020-02-10 | 2020-03-30 |  |
| A1450 |  | Fabricate and deliver structural steel |  | 40d | 2020-04-03 A | 2020-05-29 A | A1440 | 100% |  | 2020-03-31 | 2020-05-26 |  |
| A1480 |  | Seismic upgrade - Wing A shear walls |  | 40d | 2020-04-27 A | 2020-06-22 | A1330 | 60% | 16d | 2020-04-24 | 2020-06-19 | 39d |
| A1400 |  | Excavation and shoring - addition |  | 12d | 2020-06-05 | 2020-06-22 | A1340 |  |  | 2020-06-03 | 2020-06-18 | 0d |
| A1420 |  | Footings and foundation walls - addition |  | 25d | 2020-06-15 | 2020-07-20 | A1400 SS+6d |  |  | 2020-06-11 | 2020-07-16 | 0d |
| A1410 |  | Underslab utilities - addition |  | 8d | 2020-06-23 | 2020-07-02 | A1400 |  |  | 2020-06-19 | 2020-06-30 | 11d |
| A1490 |  | Seismic upgrade - Wing B |  | 35d | 2020-06-23 | 2020-08-11 | A1480, A1310 |  |  | 2020-06-22 | 2020-08-10 | 39d |
| A1430 |  | Slab on grade - addition |  | 10d | 2020-07-21 | 2020-08-03 | A1420, A1410 |  |  | 2020-07-17 | 2020-07-30 | 0d |
| A1460 |  | Erect structural steel - addition |  | 25d | 2020-08-04 | 2020-09-08 | A1430, A1450 |  |  | 2020-07-31 | 2020-09-03 | 0d |
| A1470 |  | Metal deck and elevated slab - addition |  | 15d | 2020-08-25 | 2020-09-15 | A1460 SS+10d, A1460 FF+5d |  |  | 2020-08-21 | 2020-09-11 | 0d |

| ID | WBS | Activity | Type | Duration | Start | Finish | Predecessors | Complete | Remaining | Planned start | Planned finish | Total float | Constraint |
| --- | --- | --- | --- | --- | --- | --- | --- | --- | --- | --- | --- | --- | --- |
|  | ENV | **Envelope and Roofing** |  |  | 2020-02-18 | 2020-11-18 |  |  |  |  |  |  |  |
| A1500 |  | Window and storefront submittals and fabrication |  | 60d | 2020-02-18 A | 2020-05-11 A | A1130 SS+10d | 100% |  |  |  |  |  |
| A1550 |  | Reroof existing building |  | 25d | 2020-07-08 | 2020-08-11 | A1480, A1490 SS+10d |  |  | 2020-07-07 | 2020-08-10 | 161d |  |
| A1560 |  | Window replacement - existing building |  | 25d | 2020-08-12 | 2020-09-16 | A1490, A1500 |  |  | 2020-08-11 | 2020-09-15 | 174d |  |
| A1510 |  | Exterior framing and sheathing - addition |  | 20d | 2020-09-01 | 2020-09-29 | A1470 SS+5d |  |  | 2020-08-28 | 2020-09-25 | 0d |  |
| A1520 |  | Roofing - addition |  | 18d | 2020-09-16 | 2020-10-09 | A1470 |  |  | 2020-09-14 | 2020-10-07 | 7d |  |
| A1580 |  | Exterior painting and sealants - existing building |  | 15d | 2020-09-17 | 2020-10-07 | A1560 |  |  | 2020-09-16 | 2020-10-06 | 174d |  |
| A1530 |  | Windows and storefront - addition |  | 15d | 2020-09-30 | 2020-10-20 | A1510, A1500 |  |  | 2020-09-28 | 2020-10-16 | 0d |  |
| A1540 |  | Exterior cladding - addition |  | 30d | 2020-10-07 | 2020-11-18 | A1530 SS+5d |  |  | 2020-10-05 | 2020-11-16 | 93d |  |
| A1570 |  | Addition dry-in | milestone | 0d | 2020-10-20 | 2020-10-20 | A1520, A1530 |  |  | 2020-10-16 | 2020-10-16 | 0d |  |
|  | MEP | **MEP Rough-In** |  |  | 2020-02-25 | 2020-12-18 |  |  |  |  |  |  |  |
| A1600 |  | Procure switchgear and air handling units |  | 80d | 2020-02-25 A | 2020-06-16 | A1130 | 85% | 12d |  |  | 196d |  |
| A1610 |  | MEP rough-in - Wing A |  | 40d | 2020-06-23 | 2020-08-18 | A1480 |  |  | 2020-06-22 | 2020-08-17 | 64d |  |
| A1670 |  | Fire sprinkler rough-in - existing building |  | 35d | 2020-06-30 | 2020-08-18 | A1610 SS+5d |  |  | 2020-06-29 | 2020-08-17 | 69d |  |
| A1660 |  | Main switchgear and electrical service |  | 12d | 2020-08-04 | 2020-08-19 | A1600, A1430 |  |  | 2020-07-31 | 2020-08-17 | 163d |  |
| A1620 |  | MEP rough-in - Wing B |  | 35d | 2020-08-12 | 2020-09-30 | A1490, A1610 SS+10d |  |  | 2020-08-11 | 2020-09-29 | 39d |  |
| A1680 |  | In-wall and above-ceiling inspections - existing building |  | 5d | 2020-10-01 | 2020-10-07 | A1610, A1620, A1670 |  |  | 2020-09-30 | 2020-10-06 | 39d |  |
| A1650 |  | Set rooftop units and air handlers |  | 8d | 2020-10-12 | 2020-10-21 | A1600, A1520, A1550 |  |  | 2020-10-08 | 2020-10-19 | 119d |  |
| A1630 |  | MEP rough-in - addition |  | 35d | 2020-10-21 | 2020-12-11 | A1570 |  |  | 2020-10-19 | 2020-12-09 | 0d |  |
| A1690 |  | Energize permanent power |  | 3d | 2020-10-22 | 2020-10-26 | A1660, A1650 |  |  | 2020-10-20 | 2020-10-22 | 119d |  |
| A1640 |  | Fire sprinkler rough-in - addition |  | 20d | 2020-11-04 | 2020-12-04 | A1630 SS+10d |  |  | 2020-11-02 | 2020-12-02 | 5d |  |
| A1685 |  | In-wall and above-ceiling inspections - addition |  | 5d | 2020-12-14 | 2020-12-18 | A1630, A1640 |  |  | 2020-12-10 | 2020-12-16 | 0d |  |
|  | INT | **Interiors and Finishes** |  |  | 2020-10-08 | 2021-06-21 |  |  |  |  |  |  |  |
| A1700 |  | Framing and drywall - Wing A |  | 35d | 2020-10-08 | 2020-11-30 | A1680 |  |  | 2020-10-07 | 2020-11-25 | 39d |  |
| A1710 |  | Framing and drywall - Wing B |  | 30d | 2020-10-22 | 2020-12-07 | A1680, A1700 SS+10d |  |  | 2020-10-21 | 2020-12-04 | 54d |  |
| A1880 |  | Elevator installation - addition |  | 35d | 2020-11-04 | 2020-12-28 | A1470, A1630 SS+10d |  |  | 2020-11-02 | 2020-12-23 | 120d |  |
| A1750 |  | Painting - existing building |  | 35d | 2020-12-01 | 2021-01-21 | A1700, A1710 SS+10d |  |  | 2020-11-30 | 2021-01-20 | 39d |  |
| A1730 |  | Ceilings - existing building |  | 30d | 2020-12-15 | 2021-01-28 | A1750 SS+10d, A1750 FF+5d |  |  | 2020-12-14 | 2021-01-27 | 39d |  |
| A1720 |  | Framing and drywall - addition |  | 30d | 2020-12-21 | 2021-02-03 | A1685 |  |  | 2020-12-17 | 2021-02-01 | 0d |  |
| A1770 |  | Flooring - existing building |  | 30d | 2021-01-29 | 2021-03-12 | A1730 |  |  | 2021-01-28 | 2021-03-11 | 39d |  |
| A1760 |  | Painting - addition |  | 20d | 2021-02-04 | 2021-03-04 | A1720 |  |  | 2021-02-02 | 2021-03-02 | 0d |  |
| A1780 |  | Casework and millwork - existing building |  | 25d | 2021-02-05 | 2021-03-12 | A1770 SS+5d |  |  | 2021-02-04 | 2021-03-11 | 44d |  |
| A1820 |  | MEP trim and fixtures - existing building |  | 30d | 2021-02-12 | 2021-03-26 | A1730, A1780 SS+5d |  |  | 2021-02-11 | 2021-03-25 | 44d |  |
| A1740 |  | Ceilings - addition |  | 20d | 2021-03-05 | 2021-04-01 | A1760 |  |  | 2021-03-03 | 2021-03-30 | 0d |  |
| A1840 |  | Doors, hardware and specialties - existing building |  | 15d | 2021-03-15 | 2021-04-02 | A1770 |  |  | 2021-03-12 | 2021-04-01 | 39d |  |
| A1790 |  | Flooring - addition classrooms |  | 15d | 2021-04-02 | 2021-04-22 | A1740 |  |  | 2021-03-31 | 2021-04-20 | 0d |  |
| A1800 |  | Gym wood floor |  | 20d | 2021-04-02 | 2021-04-29 | A1740, A1150 |  |  | 2021-03-31 | 2021-04-27 | 10d |  |
| A1810 |  | Casework and millwork - addition |  | 15d | 2021-04-23 | 2021-05-13 | A1790 |  |  | 2021-04-21 | 2021-05-11 | 0d |  |
| A1850 |  | Doors, hardware and specialties - addition |  | 15d | 2021-04-23 | 2021-05-13 | A1790 |  |  | 2021-04-21 | 2021-05-11 | 10d |  |
| A1830 |  | MEP trim and fixtures - addition |  | 20d | 2021-04-30 | 2021-05-27 | A1740, A1810 SS+5d |  |  | 2021-04-28 | 2021-05-25 | 0d |  |
| A1860 |  | Gym equipment and bleachers |  | 10d | 2021-04-30 | 2021-05-13 | A1800 |  |  | 2021-04-28 | 2021-05-11 | 10d |  |
| A1870 |  | Interior signage |  | 5d | 2021-05-14 | 2021-05-20 | A1840, A1850 |  |  | 2021-05-12 | 2021-05-18 | 28d |  |
| A1890 |  | Owner furniture delivery and install |  | 15d | 2021-06-01 | 2021-06-21 | A1770, A1790 |  |  |  |  | 7d | start on or after 2021-06-01 |

| ID | WBS | Activity | Type | Duration | Start | Finish | Predecessors | Planned start | Planned finish | Total float |
| --- | --- | --- | --- | --- | --- | --- | --- | --- | --- | --- |
|  | SITE | **Sitework** |  |  | 2020-06-15 | 2021-02-18 |  |  |  |  |
| A2100 |  | Site utilities - storm and sewer |  | 20d | 2020-06-15 | 2020-07-13 | A1350 | 2020-06-11 | 2020-07-09 | 183d |
| A2110 |  | Site electrical and lighting conduit |  | 12d | 2020-06-22 | 2020-07-08 | A2100 SS+5d | 2020-06-18 | 2020-07-06 | 201d |
| A2120 |  | Fire lane and bus loop paving |  | 15d | 2020-11-19 | 2020-12-11 | A2100, A1540 | 2020-11-17 | 2020-12-09 | 93d |
| A2130 |  | Curbs, sidewalks and flatwork |  | 20d | 2020-12-14 | 2021-01-12 | A2120, A2110 | 2020-12-10 | 2021-01-08 | 93d |
| A2140 |  | Playground and play surfacing |  | 15d | 2020-12-21 | 2021-01-12 | A2130 SS+5d | 2020-12-17 | 2021-01-08 | 113d |
| A2150 |  | Landscaping and irrigation |  | 20d | 2021-01-13 | 2021-02-10 | A2130, A1540 | 2021-01-11 | 2021-02-08 | 93d |
| A2160 |  | Site fencing, gates and signage |  | 10d | 2021-01-13 | 2021-01-27 | A2130 | 2021-01-11 | 2021-01-25 | 103d |
| A2170 |  | Striping and final site cleanup |  | 5d | 2021-02-11 | 2021-02-18 | A2150, A2160, A2140 | 2021-02-09 | 2021-02-16 | 93d |
|  | CX | **Commissioning** |  |  | 2020-11-19 | 2021-07-02 |  |  |  |  |
| A2240 |  | Envelope water testing and commissioning |  | 5d | 2020-11-19 | 2020-11-25 | A1540, A1580 | 2020-11-17 | 2020-11-23 | 145d |
| A2230 |  | Elevator inspection and permit |  | 5d | 2020-12-29 | 2021-01-05 | A1880 | 2020-12-24 | 2020-12-31 | 120d |
| A2200 |  | Test and balance HVAC |  | 15d | 2021-05-28 | 2021-06-18 | A1820, A1830, A1690 | 2021-05-26 | 2021-06-16 | 0d |
| A2210 |  | Fire alarm and sprinkler acceptance testing |  | 5d | 2021-05-28 | 2021-06-04 | A1820, A1830 | 2021-05-26 | 2021-06-02 | 15d |
| A2220 |  | Functional performance testing and controls |  | 15d | 2021-06-07 | 2021-06-25 | A2200 SS+5d, A2200 FF+3d | 2021-06-03 | 2021-06-23 | 0d |
| A2250 |  | Fire marshal and building official final inspections |  | 5d | 2021-06-28 | 2021-07-02 | A2210, A2220, A2230, A2240 | 2021-06-24 | 2021-06-30 | 0d |
| A2260 |  | Certificate of occupancy | milestone | 0d | 2021-07-02 | 2021-07-02 | A2250 | 2021-06-30 | 2021-06-30 | 0d |
|  | CLO | **Closeout** |  |  | 2021-04-05 | 2021-07-02 |  |  |  |  |
| A2300 |  | Punch list - existing building |  | 15d | 2021-04-05 | 2021-04-23 | A1840, A1820 | 2021-04-02 | 2021-04-22 | 39d |
| A2310 |  | Punch list - addition |  | 15d | 2021-05-28 | 2021-06-18 | A1850, A1860, A1830 | 2021-05-26 | 2021-06-16 | 0d |
| A2320 |  | O&M manuals and warranties |  | 20d | 2021-06-07 | 2021-07-02 | A2200 SS+5d | 2021-06-03 | 2021-06-30 | 0d |
| A2350 |  | Record drawings |  | 15d | 2021-06-07 | 2021-06-25 | A2310 SS+5d | 2021-06-03 | 2021-06-23 | 5d |
| A2340 |  | Final cleaning |  | 8d | 2021-06-21 | 2021-06-30 | A2300, A2310 | 2021-06-17 | 2021-06-28 | 0d |
| A2330 |  | Owner training |  | 5d | 2021-06-28 | 2021-07-02 | A2220 | 2021-06-24 | 2021-06-30 | 0d |
| A2360 |  | Owner move-in readiness walkthrough |  | 2d | 2021-07-01 | 2021-07-02 | A2340, A1890, A2170, A1870 | 2021-06-29 | 2021-06-30 | 0d |
