# Example School Modernization and Addition (synthetic)

Schedule from MS Project XML, 2020-02-03 to 2021-07-02, status date 2020-06-01, A marks actual dates.

## Calendars

- Standard (WA legal holidays): Mon-Fri 08:00-12:00, 13:00-17:00; Sat-Sun off. Exceptions (off unless hours are given): 2020-02-17 (Presidents' Day), 2020-05-25 (Memorial Day), 2020-07-03 (Independence Day (observed)), 2020-09-07 (Labor Day), 2020-11-11 (Veterans Day), 2020-11-26 (Thanksgiving), 2020-11-27 (Day after Thanksgiving), 2020-12-25 (Christmas Day), 2021-01-01 (New Year's Day), 2021-01-18 (Martin Luther King Jr. Day), 2021-02-15 (Presidents' Day), 2021-05-31 (Memorial Day).

## Schedule

| ID | WBS | Task | Type | Duration | Start | Finish | Predecessors | Complete | Remaining | Baseline start | Baseline finish | Baseline duration | Total slack | Activity ID |
| --- | --- | --- | --- | --- | --- | --- | --- | --- | --- | --- | --- | --- | --- | --- |
| 1 | 1 | **Milestones** |  | 358d | 2020-02-03 | 2021-07-02 |  |  |  |  |  |  |  |  |
| 2 | 1.1 | Notice to Proceed | milestone | 0d | 2020-02-03 A | 2020-02-03 A |  | 100% |  | 2020-02-03 | 2020-02-03 | 0d |  | A1000 |
| 3 | 1.2 | Substantial Completion | milestone | 0d | 2021-07-02 | 2021-07-02 | 94, 98, 99, 101, 102 |  |  | 2021-06-30 | 2021-06-30 | 0d | 0d | A1090 |
| 4 | 2 | **Mobilization** |  | 193d | 2020-02-03 | 2020-11-03 |  |  |  |  |  |  |  |  |
| 5 | 2.1 | Mobilize site office and trailers |  | 8d | 2020-02-03 A | 2020-02-12 A | 2 | 100% |  | 2020-02-03 | 2020-02-12 | 8d |  | A1100 |
| 6 | 2.2 | Temporary fencing and site security |  | 4d | 2020-02-05 A | 2020-02-10 A | 5SS+2d | 100% |  | 2020-02-05 | 2020-02-10 | 4d |  | A1110 |
| 7 | 2.3 | Temporary power and utilities |  | 6d | 2020-02-06 A | 2020-02-13 A | 5SS+3d | 100% |  | 2020-02-06 | 2020-02-13 | 6d |  | A1120 |
| 8 | 2.4 | Submittal schedule and long-lead buyout |  | 15d | 2020-02-03 A | 2020-02-24 A | 2 | 100% |  | 2020-02-03 | 2020-02-24 | 15d |  | A1130 |
| 9 | 2.5 | Erosion control and construction entrance |  | 3d | 2020-02-11 A | 2020-02-13 A | 6 | 100% |  | 2020-02-11 | 2020-02-13 | 3d |  | A1140 |
| 10 | 2.6 | Temporary heat and dehumidification - addition |  | 10d | 2020-10-21 | 2020-11-03 | 43, 56SF |  |  | 2020-10-19 | 2020-10-30 | 10d | 110d | A1150 |
| 11 | 3 | **Abatement** |  | 58d | 2020-02-13 | 2020-05-05 |  |  |  |  |  |  |  |  |
| 12 | 3.1 | Hazardous materials survey verification |  | 5d | 2020-02-13 A | 2020-02-20 A | 5 | 100% |  | 2020-02-13 | 2020-02-20 | 5d |  | A1200 |
| 13 | 3.2 | Abatement - Wing A classrooms |  | 20d | 2020-02-21 A | 2020-03-19 A | 12, 7 | 100% |  | 2020-02-21 | 2020-03-19 | 20d |  | A1210 |
| 14 | 3.3 | Abatement - Wing B admin and library |  | 15d | 2020-03-20 A | 2020-04-13 A | 13 | 100% |  | 2020-03-20 | 2020-04-09 | 15d |  | A1220 |
| 15 | 3.4 | Abatement - existing gym and commons |  | 12d | 2020-04-14 A | 2020-04-29 A | 14 | 100% |  | 2020-04-10 | 2020-04-27 | 12d |  | A1230 |
| 16 | 3.5 | Abatement clearance air testing |  | 4d | 2020-04-30 A | 2020-05-05 A | 15 | 100% |  | 2020-04-28 | 2020-05-01 | 4d |  | A1240 |
| 17 | 4 | **Demolition** |  | 60d | 2020-03-20 | 2020-06-12 |  |  |  |  |  |  |  |  |
| 18 | 4.1 | Interior demolition - Wing A |  | 15d | 2020-03-20 A | 2020-04-10 A | 13 | 100% |  | 2020-03-20 | 2020-04-09 | 15d |  | A1300 |
| 19 | 4.2 | Interior demolition - Wing B |  | 12d | 2020-04-14 A | 2020-04-29 A | 14, 18 | 100% |  | 2020-04-10 | 2020-04-27 | 12d |  | A1310 |
| 20 | 4.3 | Demolish existing gym (addition footprint) |  | 15d | 2020-05-06 A | 2020-05-27 A | 16 | 100% |  | 2020-05-04 | 2020-05-22 | 15d |  | A1320 |
| 21 | 4.4 | Structural openings and selective demolition - Wing A |  | 10d | 2020-04-13 A | 2020-04-24 A | 18 | 100% |  | 2020-04-10 | 2020-04-23 | 10d |  | A1330 |
| 22 | 4.5 | Haul-off and clear addition footprint |  | 6d | 2020-05-28 A | 2020-06-04 | 20 | 33% | 4d | 2020-05-26 | 2020-06-02 | 6d | 0d | A1340 |
| 23 | 4.6 | Demolish existing paving and site utilities |  | 10d | 2020-06-01 | 2020-06-12 | 22SS+2d |  |  | 2020-05-28 | 2020-06-10 | 10d | 183d | A1350 |
| 24 | 5 | **Foundations and Structure** |  | 153d | 2020-02-10 | 2020-09-15 |  |  |  |  |  |  |  |  |
| 25 | 5.1 | Excavation and shoring - addition |  | 12d | 2020-06-05 | 2020-06-22 | 22 |  |  | 2020-06-03 | 2020-06-18 | 12d | 0d | A1400 |
| 26 | 5.2 | Underslab utilities - addition |  | 8d | 2020-06-23 | 2020-07-02 | 25 |  |  | 2020-06-19 | 2020-06-30 | 8d | 11d | A1410 |
| 27 | 5.3 | Footings and foundation walls - addition |  | 25d | 2020-06-15 | 2020-07-20 | 25SS+6d |  |  | 2020-06-11 | 2020-07-16 | 25d | 0d | A1420 |
| 28 | 5.4 | Slab on grade - addition |  | 10d | 2020-07-21 | 2020-08-03 | 27, 26 |  |  | 2020-07-17 | 2020-07-30 | 10d | 0d | A1430 |
| 29 | 5.5 | Structural steel shop drawings and approval |  | 35d | 2020-02-10 A | 2020-04-02 A | 8SS+5d | 100% |  | 2020-02-10 | 2020-03-30 | 35d |  | A1440 |
| 30 | 5.6 | Fabricate and deliver structural steel |  | 40d | 2020-04-03 A | 2020-05-29 A | 29 | 100% |  | 2020-03-31 | 2020-05-26 | 40d |  | A1450 |
| 31 | 5.7 | Erect structural steel - addition |  | 25d | 2020-08-04 | 2020-09-08 | 28, 30 |  |  | 2020-07-31 | 2020-09-03 | 25d | 0d | A1460 |
| 32 | 5.8 | Metal deck and elevated slab - addition |  | 15d | 2020-08-25 | 2020-09-15 | 31SS+10d, 31FF+5d |  |  | 2020-08-21 | 2020-09-11 | 15d | 0d | A1470 |
| 33 | 5.9 | Seismic upgrade - Wing A shear walls |  | 40d | 2020-04-27 A | 2020-06-22 | 21 | 60% | 16d | 2020-04-24 | 2020-06-19 | 40d | 39d | A1480 |
| 34 | 5.10 | Seismic upgrade - Wing B |  | 35d | 2020-06-23 | 2020-08-11 | 33, 19 |  |  | 2020-06-22 | 2020-08-10 | 35d | 39d | A1490 |

| ID | WBS | Task | Type | Duration | Start | Finish | Predecessors | Complete | Remaining | Baseline start | Baseline finish | Baseline duration | Total slack | Constraint | Activity ID |
| --- | --- | --- | --- | --- | --- | --- | --- | --- | --- | --- | --- | --- | --- | --- | --- |
| 35 | 6 | **Envelope and Roofing** |  | 193d | 2020-02-18 | 2020-11-18 |  |  |  |  |  |  |  |  |  |
| 36 | 6.1 | Window and storefront submittals and fabrication |  | 60d | 2020-02-18 A | 2020-05-11 A | 8SS+10d | 100% |  | 2020-02-18 | 2020-05-11 | 60d |  |  | A1500 |
| 37 | 6.2 | Exterior framing and sheathing - addition |  | 20d | 2020-09-01 | 2020-09-29 | 32SS+5d |  |  | 2020-08-28 | 2020-09-25 | 20d | 0d |  | A1510 |
| 38 | 6.3 | Roofing - addition |  | 18d | 2020-09-16 | 2020-10-09 | 32 |  |  | 2020-09-14 | 2020-10-07 | 18d | 7d |  | A1520 |
| 39 | 6.4 | Windows and storefront - addition |  | 15d | 2020-09-30 | 2020-10-20 | 37, 36 |  |  | 2020-09-28 | 2020-10-16 | 15d | 0d |  | A1530 |
| 40 | 6.5 | Exterior cladding - addition |  | 30d | 2020-10-07 | 2020-11-18 | 39SS+5d |  |  | 2020-10-05 | 2020-11-16 | 30d | 93d |  | A1540 |
| 41 | 6.6 | Reroof existing building |  | 25d | 2020-07-08 | 2020-08-11 | 33, 34SS+10d |  |  | 2020-07-07 | 2020-08-10 | 25d | 161d |  | A1550 |
| 42 | 6.7 | Window replacement - existing building |  | 25d | 2020-08-12 | 2020-09-16 | 34, 36 |  |  | 2020-08-11 | 2020-09-15 | 25d | 174d |  | A1560 |
| 43 | 6.8 | Addition dry-in | milestone | 0d | 2020-10-20 | 2020-10-20 | 38, 39 |  |  | 2020-10-16 | 2020-10-16 | 0d | 0d |  | A1570 |
| 44 | 6.9 | Exterior painting and sealants - existing building |  | 15d | 2020-09-17 | 2020-10-07 | 42 |  |  | 2020-09-16 | 2020-10-06 | 15d | 174d |  | A1580 |
| 45 | 7 | **MEP Rough-In** |  | 208d | 2020-02-25 | 2020-12-18 |  |  |  |  |  |  |  |  |  |
| 46 | 7.1 | Procure switchgear and air handling units |  | 80d | 2020-02-25 A | 2020-06-16 | 8 | 85% | 12d | 2020-02-25 | 2020-06-16 | 80d | 196d |  | A1600 |
| 47 | 7.2 | MEP rough-in - Wing A |  | 40d | 2020-06-23 | 2020-08-18 | 33 |  |  | 2020-06-22 | 2020-08-17 | 40d | 64d |  | A1610 |
| 48 | 7.3 | MEP rough-in - Wing B |  | 35d | 2020-08-12 | 2020-09-30 | 34, 47SS+10d |  |  | 2020-08-11 | 2020-09-29 | 35d | 39d |  | A1620 |
| 49 | 7.4 | MEP rough-in - addition |  | 35d | 2020-10-21 | 2020-12-11 | 43 |  |  | 2020-10-19 | 2020-12-09 | 35d | 0d |  | A1630 |
| 50 | 7.5 | Fire sprinkler rough-in - addition |  | 20d | 2020-11-04 | 2020-12-04 | 49SS+10d |  |  | 2020-11-02 | 2020-12-02 | 20d | 5d |  | A1640 |
| 51 | 7.6 | Set rooftop units and air handlers |  | 8d | 2020-10-12 | 2020-10-21 | 46, 38, 41 |  |  | 2020-10-08 | 2020-10-19 | 8d | 119d |  | A1650 |
| 52 | 7.7 | Main switchgear and electrical service |  | 12d | 2020-08-04 | 2020-08-19 | 46, 28 |  |  | 2020-07-31 | 2020-08-17 | 12d | 163d |  | A1660 |
| 53 | 7.8 | Fire sprinkler rough-in - existing building |  | 35d | 2020-06-30 | 2020-08-18 | 47SS+5d |  |  | 2020-06-29 | 2020-08-17 | 35d | 69d |  | A1670 |
| 54 | 7.9 | In-wall and above-ceiling inspections - existing building |  | 5d | 2020-10-01 | 2020-10-07 | 47, 48, 53 |  |  | 2020-09-30 | 2020-10-06 | 5d | 39d |  | A1680 |
| 55 | 7.10 | In-wall and above-ceiling inspections - addition |  | 5d | 2020-12-14 | 2020-12-18 | 49, 50 |  |  | 2020-12-10 | 2020-12-16 | 5d | 0d |  | A1685 |
| 56 | 7.11 | Energize permanent power |  | 3d | 2020-10-22 | 2020-10-26 | 52, 51 |  |  | 2020-10-20 | 2020-10-22 | 3d | 119d |  | A1690 |
| 57 | 8 | **Interiors and Finishes** |  | 175d | 2020-10-08 | 2021-06-21 |  |  |  |  |  |  |  |  |  |
| 58 | 8.1 | Framing and drywall - Wing A |  | 35d | 2020-10-08 | 2020-11-30 | 54 |  |  | 2020-10-07 | 2020-11-25 | 35d | 39d |  | A1700 |
| 59 | 8.2 | Framing and drywall - Wing B |  | 30d | 2020-10-22 | 2020-12-07 | 54, 58SS+10d |  |  | 2020-10-21 | 2020-12-04 | 30d | 54d |  | A1710 |
| 60 | 8.3 | Framing and drywall - addition |  | 30d | 2020-12-21 | 2021-02-03 | 55 |  |  | 2020-12-17 | 2021-02-01 | 30d | 0d |  | A1720 |
| 61 | 8.4 | Ceilings - existing building |  | 30d | 2020-12-15 | 2021-01-28 | 63SS+10d, 63FF+5d |  |  | 2020-12-14 | 2021-01-27 | 30d | 39d |  | A1730 |
| 62 | 8.5 | Ceilings - addition |  | 20d | 2021-03-05 | 2021-04-01 | 64 |  |  | 2021-03-03 | 2021-03-30 | 20d | 0d |  | A1740 |
| 63 | 8.6 | Painting - existing building |  | 35d | 2020-12-01 | 2021-01-21 | 58, 59SS+10d |  |  | 2020-11-30 | 2021-01-20 | 35d | 39d |  | A1750 |
| 64 | 8.7 | Painting - addition |  | 20d | 2021-02-04 | 2021-03-04 | 60 |  |  | 2021-02-02 | 2021-03-02 | 20d | 0d |  | A1760 |
| 65 | 8.8 | Flooring - existing building |  | 30d | 2021-01-29 | 2021-03-12 | 61 |  |  | 2021-01-28 | 2021-03-11 | 30d | 39d |  | A1770 |
| 66 | 8.9 | Casework and millwork - existing building |  | 25d | 2021-02-05 | 2021-03-12 | 65SS+5d |  |  | 2021-02-04 | 2021-03-11 | 25d | 44d |  | A1780 |
| 67 | 8.10 | Flooring - addition classrooms |  | 15d | 2021-04-02 | 2021-04-22 | 62 |  |  | 2021-03-31 | 2021-04-20 | 15d | 0d |  | A1790 |
| 68 | 8.11 | Gym wood floor |  | 20d | 2021-04-02 | 2021-04-29 | 62, 10 |  |  | 2021-03-31 | 2021-04-27 | 20d | 10d |  | A1800 |
| 69 | 8.12 | Casework and millwork - addition |  | 15d | 2021-04-23 | 2021-05-13 | 67 |  |  | 2021-04-21 | 2021-05-11 | 15d | 0d |  | A1810 |
| 70 | 8.13 | MEP trim and fixtures - existing building |  | 30d | 2021-02-12 | 2021-03-26 | 61, 66SS+5d |  |  | 2021-02-11 | 2021-03-25 | 30d | 44d |  | A1820 |
| 71 | 8.14 | MEP trim and fixtures - addition |  | 20d | 2021-04-30 | 2021-05-27 | 62, 69SS+5d |  |  | 2021-04-28 | 2021-05-25 | 20d | 0d |  | A1830 |
| 72 | 8.15 | Doors, hardware and specialties - existing building |  | 15d | 2021-03-15 | 2021-04-02 | 65 |  |  | 2021-03-12 | 2021-04-01 | 15d | 39d |  | A1840 |
| 73 | 8.16 | Doors, hardware and specialties - addition |  | 15d | 2021-04-23 | 2021-05-13 | 67 |  |  | 2021-04-21 | 2021-05-11 | 15d | 10d |  | A1850 |
| 74 | 8.17 | Gym equipment and bleachers |  | 10d | 2021-04-30 | 2021-05-13 | 68 |  |  | 2021-04-28 | 2021-05-11 | 10d | 10d |  | A1860 |
| 75 | 8.18 | Interior signage |  | 5d | 2021-05-14 | 2021-05-20 | 72, 73 |  |  | 2021-05-12 | 2021-05-18 | 5d | 28d |  | A1870 |
| 76 | 8.19 | Elevator installation - addition |  | 35d | 2020-11-04 | 2020-12-28 | 32, 49SS+10d |  |  | 2020-11-02 | 2020-12-23 | 35d | 120d |  | A1880 |
| 77 | 8.20 | Owner furniture delivery and install |  | 15d | 2021-06-01 | 2021-06-21 | 65, 67 |  |  | 2021-06-01 | 2021-06-21 | 15d | 7d | start no earlier than 2021-06-01 | A1890 |

| ID | WBS | Task | Type | Duration | Start | Finish | Predecessors | Baseline start | Baseline finish | Baseline duration | Total slack | Activity ID |
| --- | --- | --- | --- | --- | --- | --- | --- | --- | --- | --- | --- | --- |
| 78 | 9 | **Sitework** |  | 170d | 2020-06-15 | 2021-02-18 |  |  |  |  |  |  |
| 79 | 9.1 | Site utilities - storm and sewer |  | 20d | 2020-06-15 | 2020-07-13 | 23 | 2020-06-11 | 2020-07-09 | 20d | 183d | A2100 |
| 80 | 9.2 | Site electrical and lighting conduit |  | 12d | 2020-06-22 | 2020-07-08 | 79SS+5d | 2020-06-18 | 2020-07-06 | 12d | 201d | A2110 |
| 81 | 9.3 | Fire lane and bus loop paving |  | 15d | 2020-11-19 | 2020-12-11 | 79, 40 | 2020-11-17 | 2020-12-09 | 15d | 93d | A2120 |
| 82 | 9.4 | Curbs, sidewalks and flatwork |  | 20d | 2020-12-14 | 2021-01-12 | 81, 80 | 2020-12-10 | 2021-01-08 | 20d | 93d | A2130 |
| 83 | 9.5 | Playground and play surfacing |  | 15d | 2020-12-21 | 2021-01-12 | 82SS+5d | 2020-12-17 | 2021-01-08 | 15d | 113d | A2140 |
| 84 | 9.6 | Landscaping and irrigation |  | 20d | 2021-01-13 | 2021-02-10 | 82, 40 | 2021-01-11 | 2021-02-08 | 20d | 93d | A2150 |
| 85 | 9.7 | Site fencing, gates and signage |  | 10d | 2021-01-13 | 2021-01-27 | 82 | 2021-01-11 | 2021-01-25 | 10d | 103d | A2160 |
| 86 | 9.8 | Striping and final site cleanup |  | 5d | 2021-02-11 | 2021-02-18 | 84, 85, 83 | 2021-02-09 | 2021-02-16 | 5d | 93d | A2170 |
| 87 | 10 | **Commissioning** |  | 155d | 2020-11-19 | 2021-07-02 |  |  |  |  |  |  |
| 88 | 10.1 | Test and balance HVAC |  | 15d | 2021-05-28 | 2021-06-18 | 70, 71, 56 | 2021-05-26 | 2021-06-16 | 15d | 0d | A2200 |
| 89 | 10.2 | Fire alarm and sprinkler acceptance testing |  | 5d | 2021-05-28 | 2021-06-04 | 70, 71 | 2021-05-26 | 2021-06-02 | 5d | 15d | A2210 |
| 90 | 10.3 | Functional performance testing and controls |  | 15d | 2021-06-07 | 2021-06-25 | 88SS+5d, 88FF+3d | 2021-06-03 | 2021-06-23 | 15d | 0d | A2220 |
| 91 | 10.4 | Elevator inspection and permit |  | 5d | 2020-12-29 | 2021-01-05 | 76 | 2020-12-24 | 2020-12-31 | 5d | 120d | A2230 |
| 92 | 10.5 | Envelope water testing and commissioning |  | 5d | 2020-11-19 | 2020-11-25 | 40, 44 | 2020-11-17 | 2020-11-23 | 5d | 145d | A2240 |
| 93 | 10.6 | Fire marshal and building official final inspections |  | 5d | 2021-06-28 | 2021-07-02 | 89, 90, 91, 92 | 2021-06-24 | 2021-06-30 | 5d | 0d | A2250 |
| 94 | 10.7 | Certificate of occupancy | milestone | 0d | 2021-07-02 | 2021-07-02 | 93 | 2021-06-30 | 2021-06-30 | 0d | 0d | A2260 |
| 95 | 11 | **Closeout** |  | 64d | 2021-04-05 | 2021-07-02 |  |  |  |  |  |  |
| 96 | 11.1 | Punch list - existing building |  | 15d | 2021-04-05 | 2021-04-23 | 72, 70 | 2021-04-02 | 2021-04-22 | 15d | 39d | A2300 |
| 97 | 11.2 | Punch list - addition |  | 15d | 2021-05-28 | 2021-06-18 | 73, 74, 71 | 2021-05-26 | 2021-06-16 | 15d | 0d | A2310 |
| 98 | 11.3 | O&M manuals and warranties |  | 20d | 2021-06-07 | 2021-07-02 | 88SS+5d | 2021-06-03 | 2021-06-30 | 20d | 0d | A2320 |
| 99 | 11.4 | Owner training |  | 5d | 2021-06-28 | 2021-07-02 | 90 | 2021-06-24 | 2021-06-30 | 5d | 0d | A2330 |
| 100 | 11.5 | Final cleaning |  | 8d | 2021-06-21 | 2021-06-30 | 96, 97 | 2021-06-17 | 2021-06-28 | 8d | 0d | A2340 |
| 101 | 11.6 | Record drawings |  | 15d | 2021-06-07 | 2021-06-25 | 97SS+5d | 2021-06-03 | 2021-06-23 | 15d | 5d | A2350 |
| 102 | 11.7 | Owner move-in readiness walkthrough |  | 2d | 2021-07-01 | 2021-07-02 | 100, 77, 86, 75 | 2021-06-29 | 2021-06-30 | 2d | 0d | A2360 |
